Schedule from OmniPlan, 2013-01-07 to 2014-10-15.
Project start 2012-12-09

## Resources

| Resource | Group |
| --- | --- |
| Resource 1 | staff |
| Equipment 1 | equipment |
| Material 1 | material |
| Group 1 | group |
| Resource 1 | staff |

## Schedule

| ID | WBS | Task | Type | Start | Predecessors | Constraint | Work |
| --- | --- | --- | --- | --- | --- | --- | --- |
| 1 | 1 | **SVT** |  | 2013-01-07 |  | start no earlier than 2013-01-07 |  |
| 2 | 1.1 | **Milestones** |  | 2013-02-01 |  |  |  |
| 3 | 1.1.1 | SVT returns from JLab | milestone | 2013-02-01 |  | start no earlier than 2013-02-01 |  |
| 4 | 1.1.2 | Project funded | milestone | 2013-10-01 |  | start no earlier than 2013-10-01 |  |
| 5 | 1.2 | **Layers 1-3** |  | 2013-01-07 |  |  |  |
| 6 | 1.2.1 | **Modules** |  | 2013-01-07 |  |  |  |
| 7 | 1.2.1.1 | **Half modules** |  | 2013-02-01 |  |  |  |
| 8 | 1.2.1.1.1 | Disassembly |  | 2013-02-01 | 3 |  | 40h |
| 9 | 1.2.1.1.2 | Testing |  | 2013-02-08 | 8 |  | 480h |
| 10 | 1.2.1.1.3 | Layers 1-3 Half Modules Complete | milestone | 2013-05-03 | 9 |  |  |
| 11 | 1.2.1.2 | **Module supports** |  | 2013-01-07 |  |  |  |
| 12 | 1.2.1.2.1 | Prototyping |  | 2013-01-07 |  |  | 480h |
| 13 | 1.2.1.2.2 | Design |  | 2013-04-01 | 12 |  | 160h |
| 14 | 1.2.1.2.3 | Procurement |  | 2013-10-01 | 13, 4 |  | 160h |
| 15 | 1.2.1.2.4 | Fabrication |  | 2013-10-29 | 14 |  | 80h |
| 16 | 1.2.1.2.5 | Assembly |  | 2013-11-12 | 15 |  | 80h |
| 17 | 1.2.1.2.6 | Testing |  | 2013-11-26 | 16 |  | 80h |
| 18 | 1.2.1.3 | **Integration** |  | 2013-04-29 |  |  |  |
| 19 | 1.2.1.3.1 | **Design** |  | 2013-04-29 | 13 |  |  |
| 20 | 1.2.1.3.1.1 | Module |  | 2013-04-29 |  |  | 160h |
| 21 | 1.2.1.3.1.2 | Assembly fixture |  | 2013-04-29 | 20FF |  | 160h |
| 22 | 1.2.1.3.2 | **Procurement** |  | 2013-10-01 | 4 |  |  |
| 23 | 1.2.1.3.2.1 | Module assembly fixture |  | 2013-10-01 | 21 |  | 160h |
| 24 | 1.2.1.3.3 | **Fabrication** |  | 2013-10-29 |  |  |  |
| 25 | 1.2.1.3.3.1 | Module assembly fixture |  | 2013-10-29 | 23 |  | 40h |

| ID | WBS | Task | Type | Start | Predecessors | Work |
| --- | --- | --- | --- | --- | --- | --- |
| 26 | 1.2.1.3.4 | **Assembly** |  | 2013-12-10 | 11, 10 |  |
| 27 | 1.2.1.3.4.1 | Half module preparation |  | 2013-12-10 |  | 80h |
| 28 | 1.2.1.3.4.2 | Module assembly |  | 2013-12-24 | 27 | 80h |
| 29 | 1.2.1.3.5 | **Testing** |  | 2014-01-07 |  |  |
| 30 | 1.2.1.3.5.1 | DAQ testing |  | 2014-01-07 | 28 | 160h |
| 31 | 1.2.1.3.5.2 | Survey |  | 2014-01-21 | 30FF | 80h |
| 32 | 1.2.1.4 | Layers 1-3 modules complete | milestone | 2014-02-04 | 29 |  |
| 33 | 1.2.2 | **Support Plates** |  | 2013-05-27 |  |  |
| 34 | 1.2.2.1 | **Design** |  | 2013-05-27 |  |  |
| 35 | 1.2.2.1.1 | Support plate |  | 2013-05-27 | 20 | 480h |
| 36 | 1.2.2.2 | **Procurement** |  | 2013-10-01 | 34, 4 |  |
| 37 | 1.2.2.2.1 | Support plate |  | 2013-10-01 |  | 160h |
| 38 | 1.2.2.3 | **Fabrication** |  | 2013-10-29 | 36 |  |
| 39 | 1.2.2.3.1 | Small parts |  | 2013-10-29 |  | 80h |
| 40 | 1.2.2.4 | **Assembly** |  | 2014-02-04 | 38, 32 |  |
| 41 | 1.2.2.4.1 | Module mounting |  | 2014-02-04 |  | 80h |
| 42 | 1.2.2.5 | **Testing** |  | 2014-02-04 | 40SS |  |
| 43 | 1.2.2.5.1 | DAQ testing |  | 2014-02-04 |  | 240h |
| 44 | 1.2.2.5.2 | Survey |  | 2014-02-04 |  | 80h |
| 45 | 1.2.2.6 | Layers 1-3 Support plates complete | milestone | 2014-03-18 | 42 |  |
| 46 | 1.2.3 | **Integration** |  | 2013-08-19 |  |  |
| 47 | 1.2.3.1 | **Design** |  | 2013-08-19 |  |  |
| 48 | 1.2.3.1.1 | Layers 1-3 design |  | 2013-08-19 | 35 | 480h |
| 49 | 1.2.3.2 | **Procurement** |  | 2013-11-11 | 4 |  |
| 50 | 1.2.3.2.1 | Hardware |  | 2013-11-11 | 48 | 160h |

| ID | WBS | Task | Type | Start | Predecessors | Work |
| --- | --- | --- | --- | --- | --- | --- |
| 51 | 1.2.3.3 | **Fabrication** |  | 2013-12-09 |  |  |
| 52 | 1.2.3.3.1 | Small parts |  | 2013-12-09 | 50 | 80h |
| 53 | 1.2.3.4 | **Assembly** |  | 2014-03-18 | 45 |  |
| 54 | 1.2.3.4.1 | Layer 1-3 assembly |  | 2014-03-18 | 51, 226, 231 | 80h |
| 55 | 1.2.3.5 | **Testing** |  | 2014-04-01 |  |  |
| 56 | 1.2.3.5.1 | Survey |  | 2014-04-01 | 54 | 80h |
| 57 | 1.2.4 | Layers 1-3 complete | milestone | 2014-04-15 | 56 |  |
| 58 | 1.3 | **Layers 4-6** |  | 2013-04-29 | 13 |  |
| 59 | 1.3.1 | **Modules** |  | 2013-04-29 |  |  |
| 60 | 1.3.1.1 | **Half Modules** |  | 2013-04-29 |  |  |
| 61 | 1.3.1.1.1 | **Supports** |  | 2013-04-29 |  |  |
| 62 | 1.3.1.1.1.1 | **Design** |  | 2013-04-29 |  |  |
| 63 | 1.3.1.1.1.1.1 | Carbon Fiber |  | 2013-04-29 |  | 160h |
| 64 | 1.3.1.1.1.1.2 | Kapton |  | 2013-04-29 | 63FF | 160h |
| 65 | 1.3.1.1.1.2 | **Procurement** |  | 2013-10-01 | 62, 4 |  |
| 66 | 1.3.1.1.1.2.1 | Carbon fiber |  | 2013-10-01 |  | 160h |
| 67 | 1.3.1.1.1.2.2 | Kapton |  | 2013-10-01 | 66FF | 160h |
| 68 | 1.3.1.1.1.3 | Fabrication |  | 2013-10-29 | 65 | 80h |
| 69 | 1.3.1.1.1.4 | Assembly |  | 2013-11-12 | 68 | 160h |
| 70 | 1.3.1.1.1.5 | Testing |  | 2013-12-10 | 69 | 40h |
| 71 | 1.3.1.1.2 | **Sensors** |  | 2013-04-29 |  |  |
| 72 | 1.3.1.1.2.1 | Procurement |  | 2013-04-29 |  | 160h |
| 73 | 1.3.1.1.2.2 | Testing |  | 2013-05-27 | 72 | 80h |
| 74 | 1.3.1.1.3 | **Integration** |  | 2013-08-05 |  |  |
| 75 | 1.3.1.1.3.1 | **Design** |  | 2013-08-05 |  |  |
| 76 | 1.3.1.1.3.1.1 | Half-module design |  | 2013-08-05 | 190FF, 64FF | 320h |
| 77 | 1.3.1.1.3.1.2 | Support assembly fixture |  | 2013-09-30 | 76 | 80h |
| 78 | 1.3.1.1.3.1.3 | Half-module assembly fixture |  | 2013-09-30 | 76 | 160h |
| 79 | 1.3.1.1.3.1.4 | Wirebonding fixture |  | 2013-09-30 | 76 | 160h |

| ID | WBS | Task | Type | Start | Predecessors | Constraint | Work |
| --- | --- | --- | --- | --- | --- | --- | --- |
| 80 | 1.3.1.1.3.2 | **Procurement** |  | 2013-10-14 |  |  |  |
| 81 | 1.3.1.1.3.2.1 | Support assembly fixture |  | 2013-10-14 | 77 |  | 160h |
| 82 | 1.3.1.1.3.2.2 | Half-module assembly fixture |  | 2013-10-28 | 78 |  | 160h |
| 83 | 1.3.1.1.3.2.3 | Wirebonding fixture |  | 2013-10-28 | 79 |  | 160h |
| 84 | 1.3.1.1.3.3 | **Fabrication** |  | 2013-11-25 |  |  |  |
| 85 | 1.3.1.1.3.3.1 | Small parts |  | 2013-11-25 | 80 |  | 80h |
| 86 | 1.3.1.1.3.4 | **Assembly** |  | 2013-12-09 | 194SS, 4 |  |  |
| 87 | 1.3.1.1.3.4.1 | half-module assembly |  | 2013-12-09 | 84 |  | 320h |
| 88 | 1.3.1.1.3.4.2 | wirebonding |  | 2013-12-09 | 87SS |  | 320h |
| 89 | 1.3.1.1.3.5 | **Testing** |  | 2013-12-09 |  |  |  |
| 90 | 1.3.1.1.3.5.1 | DAQ testing |  | 2013-12-09 | 88SS |  | 240h |
| 91 | 1.3.1.1.3.6 | Layers 4-6 Half Modules Complete | milestone | 2014-01-18 | 89 |  |  |
| 92 | 1.3.1.2 | **Module supports** |  | 2013-08-26 |  |  |  |
| 93 | 1.3.1.2.1 | Design |  | 2013-08-26 |  | start no earlier than 2013-08-26 | 320h |
| 94 | 1.3.1.2.2 | Procurement |  | 2013-10-21 | 93, 4 |  | 160h |
| 95 | 1.3.1.2.3 | Fabrication |  | 2013-11-18 | 94 |  | 80h |
| 96 | 1.3.1.2.4 | Assembly |  | 2013-12-02 | 95 |  | 80h |
| 97 | 1.3.1.2.5 | Testing |  | 2013-12-16 | 96 |  | 80h |
| 98 | 1.3.1.3 | **Integration** |  | 2013-10-21 |  |  |  |
| 99 | 1.3.1.3.1 | **Design** |  | 2013-10-21 |  |  |  |
| 100 | 1.3.1.3.1.1 | Module |  | 2013-10-21 | 93, 76FF |  | 320h |
| 101 | 1.3.1.3.1.2 | Module assembly fixture |  | 2013-12-02 | 100FF |  | 80h |
| 102 | 1.3.1.3.2 | **Procurement** |  | 2013-12-16 | 4 |  |  |
| 103 | 1.3.1.3.2.1 | Module assembly fixture |  | 2013-12-16 | 101 |  | 160h |

| ID | WBS | Task | Type | Start | Predecessors | Constraint | Work |
| --- | --- | --- | --- | --- | --- | --- | --- |
| 104 | 1.3.1.3.3 | **Fabrication** |  | 2014-01-13 |  |  |  |
| 105 | 1.3.1.3.3.1 | Module assembly fixture |  | 2014-01-13 | 103 |  | 40h |
| 106 | 1.3.1.3.4 | **Assembly** |  | 2014-01-20 |  |  |  |
| 107 | 1.3.1.3.4.1 | Modules |  | 2014-01-20 | 91, 105 |  | 160h |
| 108 | 1.3.1.3.5 | **Testing** |  | 2014-01-20 | 106SS |  |  |
| 109 | 1.3.1.3.5.1 | DAQ testing |  | 2014-01-20 |  |  | 160h |
| 110 | 1.3.1.3.5.2 | Survey |  | 2014-02-17 | 109 |  | 80h |
| 111 | 1.3.1.4 | Layers 4-6 Modules Complete | milestone | 2014-03-01 | 110 |  |  |
| 112 | 1.3.2 | **Support Plates** |  | 2013-10-25 | 33SS |  |  |
| 113 | 1.3.2.1 | **Design** |  | 2013-10-25 |  |  |  |
| 114 | 1.3.2.1.1 | Support plate |  | 2013-10-25 | 100FF | start no earlier than 2013-10-25 | 480h |
| 115 | 1.3.2.2 | **Procurement** |  | 2014-01-17 | 113, 4 |  |  |
| 116 | 1.3.2.2.1 | Support plate |  | 2014-01-17 |  |  | 160h |
| 117 | 1.3.2.3 | **Fabrication** |  | 2014-02-14 | 115 |  |  |
| 118 | 1.3.2.3.1 | Small parts |  | 2014-02-14 |  |  | 80h |
| 119 | 1.3.2.4 | **Assembly** |  | 2014-03-03 | 117 |  |  |
| 120 | 1.3.2.4.1 | Module mounting |  | 2014-03-03 | 111 |  | 80h |
| 121 | 1.3.2.5 | **Testing** |  | 2014-03-17 | 119 |  |  |
| 122 | 1.3.2.5.1 | DAQ testing |  | 2014-03-17 |  |  | 240h |
| 123 | 1.3.2.5.2 | Survey |  | 2014-03-17 |  |  | 80h |
| 124 | 1.3.2.6 | Layers 4-6 support plates complete | milestone | 2014-04-26 | 121 |  |  |
| 125 | 1.3.3 | **Integration** |  | 2013-10-25 |  |  |  |
| 126 | 1.3.3.1 | **Design** |  | 2013-10-25 |  |  |  |
| 127 | 1.3.3.1.1 | Layers 4-6 Design |  | 2013-10-25 | 114FF |  | 480h |

| ID | WBS | Task | Type | Start | Predecessors | Work |
| --- | --- | --- | --- | --- | --- | --- |
| 128 | 1.3.3.2 | **Procurement** |  | 2014-01-17 | 4 |  |
| 129 | 1.3.3.2.1 | Hardware |  | 2014-01-17 | 127 | 160h |
| 130 | 1.3.3.3 | **Fabrication** |  | 2014-01-17 |  |  |
| 131 | 1.3.3.3.1 | Small parts |  | 2014-01-17 | 127 | 80h |
| 132 | 1.3.3.4 | **Assembly** |  | 2014-04-28 | 124 |  |
| 133 | 1.3.3.4.1 | Layer 4-6 assembly |  | 2014-04-28 | 131, 129, 236, 241 | 80h |
| 134 | 1.3.3.5 | **Testing** |  | 2014-05-12 |  |  |
| 135 | 1.3.3.5.1 | Survey |  | 2014-05-12 | 133 | 80h |
| 136 | 1.3.4 | Layers 4-6 complete | milestone | 2014-05-24 | 135 |  |
| 137 | 1.4 | **Tracker support** |  | 2013-10-01 | 4 |  |
| 138 | 1.4.1 | **C support** |  | 2013-10-01 |  |  |
| 139 | 1.4.1.1 | Design |  | 2013-10-01 | 48FF | 320h |
| 140 | 1.4.1.2 | Procurement |  | 2013-11-26 | 139, 4 | 160h |
| 141 | 1.4.1.3 | Fabrication |  | 2013-12-24 | 140 | 160h |
| 142 | 1.4.1.4 | Assembly |  | 2014-01-21 | 141 | 80h |
| 143 | 1.4.1.5 | Testing |  | 2014-02-04 | 142 | 80h |
| 144 | 1.4.2 | **DAQ Support/Cooling** |  | 2014-01-17 |  |  |
| 145 | 1.4.2.1 | Design |  | 2014-01-17 | 151FF | 320h |
| 146 | 1.4.2.2 | Procurement |  | 2014-03-14 | 145, 4 | 80h |
| 147 | 1.4.2.3 | Fabrication |  | 2014-03-28 | 146 | 160h |
| 148 | 1.4.2.4 | Assembly |  | 2014-04-25 | 147 | 80h |
| 149 | 1.4.2.5 | Testing |  | 2014-05-09 | 148 | 80h |
| 150 | 1.4.3 | **Baseplate** |  | 2014-01-17 |  |  |
| 151 | 1.4.3.1 | Design |  | 2014-01-17 | 48, 127 | 320h |
| 152 | 1.4.3.2 | Procurement |  | 2014-03-14 | 151 | 80h |
| 153 | 1.4.3.3 | Fabrication |  | 2014-03-28 | 152 | 160h |
| 154 | 1.4.3.4 | Assembly |  | 2014-04-25 | 153 | 80h |
| 155 | 1.4.3.5 | Testing |  | 2014-05-09 | 154 | 80h |
| 156 | 1.4.4 | Integration |  | 2014-05-23 | 155 | 80h |
| 157 | 1.4.5 | Testing |  | 2014-06-06 | 156 | 80h |
| 158 | 1.4.6 | Tracker Support Complete | milestone | 2014-06-20 | 157 |  |

| ID | WBS | Task | Type | Start | Predecessors | Constraint | Work |
| --- | --- | --- | --- | --- | --- | --- | --- |
| 159 | 1.5 | **Services** |  | 2013-10-28 | 4 |  |  |
| 160 | 1.5.1 | **Motion Levers** |  | 2013-10-28 |  |  |  |
| 161 | 1.5.1.1 | Design |  | 2013-10-28 | 48FF |  | 80h |
| 162 | 1.5.1.2 | Procurement |  | 2013-11-11 | 161, 4 |  | 80h |
| 163 | 1.5.1.3 | Fabrication |  | 2013-11-25 | 162 |  | 80h |
| 164 | 1.5.1.4 | Assembly |  | 2013-12-09 | 163 |  | 80h |
| 165 | 1.5.1.5 | Testing |  | 2013-12-23 | 164 |  | 80h |
| 166 | 1.5.2 | **Vacuum Flanges/Boards/cables** |  | 2014-01-01 |  |  |  |
| 167 | 1.5.2.1 | Design |  | 2014-01-01 |  | start no earlier than 2014-01-01 | 416h |
| 168 | 1.5.2.2 | Procurement |  | 2014-03-14 | 167, 4 |  | 40h |
| 169 | 1.5.2.3 | Fabrication |  | 2014-04-07 | 168 | start no earlier than 2014-04-07 | 40h |
| 170 | 1.5.2.4 | Assembly |  | 2014-05-13 | 169, 215, 223 |  | 80h |
| 171 | 1.5.2.5 | Testing |  | 2014-05-27 | 170 |  | 40h |
| 172 | 1.5.3 | **Shipping** |  | 2014-04-21 |  |  |  |
| 173 | 1.5.3.1 | Design |  | 2014-04-21 |  | start no earlier than 2014-04-21 | 120h |
| 174 | 1.5.3.2 | Procurement |  | 2014-05-12 | 173 |  | 160h |
| 175 | 1.5.3.3 | Fabrication |  | 2014-06-09 | 174 |  | 120h |
| 176 | 1.5.3.4 | Assembly |  | 2014-06-30 | 175 |  | 80h |
| 177 | 1.5.3.5 | Testing |  | 2014-07-14 | 176 |  | 40h |
| 178 | 1.5.4 | Services complete | milestone | 2014-07-19 | 165, 171, 177 |  |  |
| 179 | 1.6 | **Integration at SLAC** |  | 2014-06-20 | 5 |  |  |
| 180 | 1.6.1 | Assembly |  | 2014-06-20 | 58, 160, 166, 137, 225 |  | 80h |
| 181 | 1.6.2 | Testing |  | 2014-07-04 | 180 |  | 80h |
| 182 | 1.6.3 | SVT ready to ship | milestone | 2014-08-27 | 181, 172, 178, 296 |  |  |

| ID | WBS | Task | Type | Start | Predecessors | Constraint | Work |
| --- | --- | --- | --- | --- | --- | --- | --- |
| 183 | 1.7 | **Integration at JLab** |  | 2014-08-27 | 182 |  |  |
| 184 | 1.7.1 | Assembly |  | 2014-08-27 |  |  | 80h |
| 185 | 1.7.2 | Testing |  | 2014-09-10 | 184 |  | 160h |
| 186 | 1.7.3 | Installation |  | 2014-10-08 | 185 |  | 40h |
| 187 | 1.7.4 | SVT project complete | milestone | 2014-10-15 | 186 |  |  |
| 188 | 2 | **SVT DAQ** |  | 2013-08-05 |  |  |  |
| 189 | 2.1 | **Hybrids** |  | 2013-08-05 |  |  |  |
| 190 | 2.1.1 | Design |  | 2013-08-05 |  | start no earlier than 2013-08-05 | 320h |
| 191 | 2.1.2 | Procurement |  | 2013-09-30 | 190 |  | 80h |
| 192 | 2.1.3 | Fabrication |  | 2013-10-14 | 191 |  | 80h |
| 193 | 2.1.4 | Assembly |  | 2013-10-28 | 192 |  | 160h |
| 194 | 2.1.5 | Testing |  | 2013-11-25 | 193 |  | 160h |
| 195 | 2.1.6 | Hybrids Complete | milestone | 2013-12-21 | 194 |  |  |
| 196 | 2.2 | **FE Boards** |  | 2013-12-02 |  | start no earlier than 2013-12-02 |  |
| 197 | 2.2.1 | Design |  | 2013-12-02 |  |  | 240h |
| 198 | 2.2.2 | Procurement |  | 2014-01-24 | 197 | start no earlier than 2014-01-24 | 40h |
| 199 | 2.2.3 | Assembly |  | 2014-01-31 | 198 |  | 40h |
| 200 | 2.2.4 | Firmware |  | 2013-12-27 |  | start no earlier than 2013-12-27 | 160h |
| 201 | 2.2.5 | Testing |  | 2014-02-07 | 199, 212SS, 200 |  | 472h |
| 202 | 2.2.6 | FE Board Functionality Complete | milestone | 2014-05-01 | 201 | start no earlier than 2014-04-17 |  |
| 203 | 2.2.7 | Layout 2nd spin |  | 2014-05-01 | 202 | start no earlier than 2014-04-17 | 40h |
| 204 | 2.2.8 | Procurement 2nd spin |  | 2014-05-08 | 203 | start no earlier than 2014-04-17 | 40h |
| 205 | 2.2.9 | Assembly |  | 2014-05-15 | 204 | start no earlier than 2014-04-17 | 40h |
| 206 | 2.2.10 | Production Testing |  | 2014-05-22 | 205 | start no earlier than 2014-04-17 | 40h |
| 207 | 2.2.11 | FE Boards Complete | milestone | 2014-05-29 | 206 |  |  |

| ID | WBS | Task | Type | Start | Predecessors | Constraint | Work |
| --- | --- | --- | --- | --- | --- | --- | --- |
| 208 | 2.3 | **Flange Boards** |  | 2013-11-25 |  | start no earlier than 2013-11-25 |  |
| 209 | 2.3.1 | Design |  | 2013-11-25 |  |  | 80h |
| 210 | 2.3.2 | Procurement |  | 2014-01-14 | 209 | start no earlier than 2014-01-14 | 40h |
| 211 | 2.3.3 | Assembly |  | 2014-01-21 | 210 |  | 40h |
| 212 | 2.3.4 | Testing |  | 2014-01-28 | 259FF, 211 |  | 512h |
| 213 | 2.3.5 | Flange Boards Functionality Complete | milestone | 2014-04-26 | 259, 212 | start no earlier than 2014-04-17 |  |
| 214 | 2.3.6 | Procurement Production |  | 2014-04-28 | 213 | start no earlier than 2014-04-17 | 40h |
| 215 | 2.3.7 | Production Testing |  | 2014-05-05 | 214 | start no earlier than 2014-04-17 | 40h |
| 216 | 2.3.8 | Flange Boards Complete | milestone | 2014-05-10 | 215 |  |  |
| 217 | 2.4 | **Power Flange Boards** |  | 2014-03-10 |  | start no earlier than 2013-11-25 |  |
| 218 | 2.4.1 | Design |  | 2014-03-10 |  | start no earlier than 2014-03-09 | 80h |
| 219 | 2.4.2 | Schematic |  | 2014-03-24 | 218 |  | 16h |
| 220 | 2.4.3 | Layout |  | 2014-03-26 | 219 |  | 184h |
| 221 | 2.4.4 | Procurement |  | 2014-04-28 | 220 | start no earlier than 2014-01-14 | 40h |
| 222 | 2.4.5 | Assembly |  | 2014-05-05 | 221 |  | 40h |
| 223 | 2.4.6 | Testing |  | 2014-05-12 | 222 |  | 8h |
| 224 | 2.4.7 | Power Flange Boards Complete | milestone | 2014-05-13 | 223 |  |  |
| 225 | 2.5 | **Cables** |  | 2014-02-03 |  | start no earlier than 2014-02-03 |  |
| 226 | 2.5.1 | **L1-L3 Aggregators** |  | 2014-02-03 |  |  |  |
| 227 | 2.5.1.1 | Design |  | 2014-02-03 | 35 |  | 120h |
| 228 | 2.5.1.2 | Procurement |  | 2014-02-24 | 227 |  | 40h |
| 229 | 2.5.1.3 | Assembly |  | 2014-03-03 | 228 |  | 40h |
| 230 | 2.5.1.4 | Testing |  | 2014-03-10 | 229 |  | 40h |
| 231 | 2.5.2 | **L1-L3 FEB Cables** |  | 2014-02-03 |  |  |  |
| 232 | 2.5.2.1 | Design |  | 2014-02-03 | 35 |  | 120h |
| 233 | 2.5.2.2 | Procurement |  | 2014-02-24 | 232 |  | 40h |
| 234 | 2.5.2.3 | Assembly |  | 2014-03-03 | 233 |  | 40h |
| 235 | 2.5.2.4 | Testing |  | 2014-03-10 | 234 |  | 40h |

| ID | WBS | Task | Start | Predecessors | Constraint | Work |
| --- | --- | --- | --- | --- | --- | --- |
| 236 | 2.5.3 | **L4-L6 Aggregators** | 2014-02-03 |  |  |  |
| 237 | 2.5.3.1 | Design | 2014-02-03 | 114 |  | 120h |
| 238 | 2.5.3.2 | Procurement | 2014-02-24 | 237 |  | 40h |
| 239 | 2.5.3.3 | Assembly | 2014-03-03 | 238 |  | 40h |
| 240 | 2.5.3.4 | Testing | 2014-03-10 | 239 |  | 40h |
| 241 | 2.5.4 | **L4-L6 FEB Cables** | 2014-02-03 |  |  |  |
| 242 | 2.5.4.1 | Design | 2014-02-03 | 114 |  | 120h |
| 243 | 2.5.4.2 | Procurement | 2014-02-24 | 242 |  | 40h |
| 244 | 2.5.4.3 | Assembly | 2014-03-03 | 243 |  | 40h |
| 245 | 2.5.4.4 | Testing | 2014-03-10 | 244 |  | 40h |
| 246 | 2.5.5 | **FEB HV Cables** | 2014-02-03 |  |  |  |
| 247 | 2.5.5.1 | Design | 2014-02-03 |  |  | 120h |
| 248 | 2.5.5.2 | Procurement | 2014-02-24 | 247 |  | 160h |
| 249 | 2.5.5.3 | Assembly | 2014-04-28 | 248 | start no earlier than 2014-04-28 | 80h |
| 250 | 2.5.5.4 | Testing | 2014-05-12 | 249 |  | 40h |
| 251 | 2.5.6 | **FEB LV Cables** | 2014-02-03 |  |  |  |
| 252 | 2.5.6.1 | Design | 2014-02-03 |  |  | 120h |
| 253 | 2.5.6.2 | Procurement | 2014-02-24 | 252 |  | 160h |
| 254 | 2.5.6.3 | Assembly | 2014-04-28 | 253 | start no earlier than 2014-04-28 | 80h |
| 255 | 2.5.6.4 | Testing | 2014-05-12 | 254 |  | 40h |
| 256 | 2.5.7 | **FEB Data Cables** | 2014-02-03 |  |  |  |
| 257 | 2.5.7.1 | Design | 2014-02-03 |  |  | 40h |
| 258 | 2.5.7.2 | Procurement | 2014-02-10 | 257 |  | 40h |
| 259 | 2.5.7.3 | Testing | 2014-02-19 | 258 | start no earlier than 2014-02-19 | 384h |
| 260 | 2.5.7.4 | Production Procurement | 2014-04-28 | 259 | start no earlier than 2014-04-17 | 80h |
| 261 | 2.5.7.5 | Production Testing | 2014-05-12 | 260 | start no earlier than 2014-04-17 | 8h |

| ID | WBS | Task | Type | Start | Predecessors | Complete | Constraint | Work | Actual work |
| --- | --- | --- | --- | --- | --- | --- | --- | --- | --- |
| 262 | 2.5.8 | **External PS Cables** |  | 2014-02-03 |  |  |  |  |  |
| 263 | 2.5.8.1 | Design |  | 2014-02-03 |  |  |  | 488h |  |
| 264 | 2.5.8.2 | Procurement |  | 2014-02-03 | 263SS | 100% |  | 560h | 560h |
| 265 | 2.5.8.3 | Assembly |  | 2014-04-24 | 263SS, 264SS, 264FF |  | start no earlier than 2014-04-24 | 136h |  |
| 266 | 2.5.8.4 | Testing |  | 2014-05-19 | 265 |  |  | 16h |  |
| 267 | 2.5.9 | **External DAQ Cables** |  | 2014-04-21 |  |  |  |  |  |
| 268 | 2.5.9.1 | Design |  | 2014-04-21 |  |  | start no earlier than 2014-04-21 | 8h |  |
| 269 | 2.5.9.2 | Procurement |  | 2014-04-22 | 268 |  |  | 160h |  |
| 270 | 2.5.9.3 | Assembly |  | 2014-05-20 | 269 |  |  | 8h |  |
| 271 | 2.5.9.4 | Testing |  | 2014-05-21 | 270 |  |  | 8h |  |
| 272 | 2.5.10 | Cables Complete | milestone | 2014-05-22 | 226, 231, 236, 241, 246, 251, 256, 262, 267 |  |  |  |  |
| 273 | 2.6 | **ATCA DAQ** |  | 2014-01-06 |  |  | start no earlier than 2014-01-06 |  |  |
| 274 | 2.6.1 | **RCE Nodes** |  | 2014-04-04 |  |  |  |  |  |
| 275 | 2.6.1.1 | Procurement |  | 2014-04-04 |  |  | start no earlier than 2014-04-04 | 160h |  |
| 276 | 2.6.1.2 | DTM Firmware |  | 2014-05-02 | 275 |  |  | 80h |  |
| 277 | 2.6.1.3 | DPM Firmware |  | 2014-05-16 | 276 |  |  | 80h |  |
| 278 | 2.6.1.4 | Software |  | 2014-05-30 | 277 |  |  | 80h |  |
| 279 | 2.6.1.5 | ROC Software |  | 2014-06-13 | 278 |  |  | 80h |  |
| 280 | 2.6.1.6 | Testing |  | 2014-06-27 | 279 |  |  | 80h |  |
| 281 | 2.6.2 | **Trigger RTM** |  | 2014-01-06 |  |  |  |  |  |
| 282 | 2.6.2.1 | Design |  | 2014-01-06 |  |  |  | 560h |  |
| 283 | 2.6.2.2 | Procurement |  | 2014-04-14 | 282 |  |  | 120h |  |
| 284 | 2.6.2.3 | Assembly |  | 2014-05-05 | 283 |  |  | 40h |  |
| 285 | 2.6.2.4 | Testing |  | 2014-05-12 | 284 |  |  | 120h |  |
| 286 | 2.6.3 | RCE DAQ Complete | milestone | 2014-07-11 | 280, 285 |  |  |  |  |

| ID | WBS | Task | Type | Start | Predecessors | Constraint | Work |
| --- | --- | --- | --- | --- | --- | --- | --- |
| 287 | 2.7 | **Power Supplies** |  | 2013-11-22 |  | start no earlier than 2013-11-22 |  |
| 288 | 2.7.1 | Procurement |  | 2013-11-22 |  | start no earlier than 2013-11-22 | 1224h |
| 289 | 2.7.2 | EPICS IOC software |  | 2014-04-21 |  | start no earlier than 2014-04-21 | 120h |
| 290 | 2.7.3 | Temporary Hardware Setup |  | 2014-05-21 | 262 | start no earlier than 2014-05-05 | 40h |
| 291 | 2.7.4 | EPICS GUI testing |  | 2014-05-28 | 290, 289 | start no earlier than 2014-04-17 | 40h |
| 292 | 2.7.5 | Testing |  | 2014-06-25 | 288, 291, 289 | start no earlier than 2014-02-14 | 80h |
| 293 | 2.8 | **Integration** |  | 2014-07-09 |  |  |  |
| 294 | 2.8.1 | Assembly |  | 2014-07-09 | 5, 58, 166, 144, 225, 292 |  | 80h |
| 295 | 2.8.2 | Testing |  | 2014-07-23 | 273, 294 |  | 200h |
| 296 | 2.9 | SVT DAQ Complete | milestone | 2014-08-27 | 295 |  |  |

Notes:
- 288: Crate&LV modules 6/24, HV modules 5/9.
- 290: Borrow crate and modules
- 291: Bryan visits SLAC to help setup EPICS
